# Plan de Trabajo

How a schedule from MS Project changed from version to version. A marks actual dates.

## Version 1 (saved 2022-04-07)

Note of the change: '[DEV]

| ID | WBS | Task | Duration | Start | Finish | Predecessors | Complete | Total float |
| --- | --- | --- | --- | --- | --- | --- | --- | --- |
| 1 | 1 | **Proyecto de Sistema para Clinica Médica** | 74d | 2022-03-17 A | 2022-06-28 |  | 32% | 0d |
| 2 | 1.1 | **Inicio** | 11d | 2022-03-17 A | 2022-03-31 A |  | 100% |  |
| 3 |  | Estudio de información de las instituciones médicas centralizadas en la historia clínica | 2d | 2022-03-17 A | 2022-03-18 A |  | 100% |  |
| 4 |  | Estudio de la estructura organizacional de una clínica médica | 2d | 2022-03-17 A | 2022-03-18 A |  | 100% |  |
| 5 |  | Estudio de factibilidad económico | 2d | 2022-03-17 A | 2022-03-18 A |  | 100% |  |
| 6 |  | Acta de Constitución | 4d | 2022-03-21 A | 2022-03-24 A | 5 | 100% |  |
| 7 |  | Realizar Dercas | 4d | 2022-03-25 A | 2022-03-30 A | 6 | 100% |  |
| 8 |  | Reunión Inicial de Proyecto (Kick Off) | 1d | 2022-03-31 A | 2022-03-31 A | 7 | 100% |  |
| 9 | 1.2 | **Planificación** | 14d | 2022-03-17 A | 2022-04-05 |  | 86% | 60d |
| 10 | 1.2.1 | **Toma de Requerimientos** | 14d | 2022-03-17 A | 2022-04-05 |  | 86% | 60d |
| 11 |  | Tomar Requerimiento Funcionales | 2d | 2022-04-01 A | 2022-04-04 A | 8 | 100% |  |
| 12 |  | Tomar Requerimientos no Funcionales | 2d | 2022-03-17 A | 2022-03-18 A |  | 100% |  |
| 13 |  | Definir Lenguaje de Programación | 1d | 2022-03-21 A | 2022-03-21 A | 12 | 100% |  |
| 14 |  | Definir IDE a utilizar | 1d | 2022-03-17 A | 2022-03-17 A |  | 100% |  |
| 15 |  | Definir Base de Datos | 1d | 2022-03-22 A | 2022-03-22 A | 13 | 100% |  |
| 16 |  | Realizar Diagrama de Entidad Relación | 2d | 2022-03-23 A | 2022-03-24 A | 15 | 100% |  |
| 17 | 1.2.1.7 | **Desarrollo de Diagramas UML** | 8d | 2022-03-25 A | 2022-04-05 |  | 71% | 60d |
| 18 |  | Diagrama de Casos de uso | 1d | 2022-03-25 A | 2022-03-25 A | 16 | 100% |  |
| 19 |  | Diagrama de Clases | 3d | 2022-03-28 A | 2022-03-30 | 18 | 50% | 1.6d |
| 20 |  | Diagrama de Secuencias | 2d | 2022-03-31 A | 2022-04-01 | 19 | 80% | 1.6d |
| 21 |  | Diagrama de Actividades | 2d | 2022-04-04 A | 2022-04-05 | 20 | 80% | 60d |
| 22 | 1.3 | **Ejecución** | 44d | 2022-04-06 A | 2022-06-06 |  | 21% | 16d |
| 23 |  | Realizar Mockups | 4d | 2022-04-06 A | 2022-04-11 A | 21 | 100% |  |
| 24 |  | Implementacion del ambiente para desarrollo | 1d | 2022-04-12 A | 2022-04-12 A | 23 | 100% |  |
| 25 |  | Realizar la Base de Datos | 5d | 2022-04-13 A | 2022-04-19 A | 24 | 100% |  |
| 26 | 1.3.4 | **Desarrollar Backend** | 22d | 2022-04-20 A | 2022-05-19 | 25 | 26% | 28d |
| 27 |  | Creacion de conexión a la base de datos | 3d | 2022-04-20 A | 2022-04-22 A | 25 | 100% |  |
| 28 |  | Configuracion de la base de datos | 3d | 2022-04-25 A | 2022-04-27 A | 27 | 100% |  |
| 29 |  | Implemenacion de plugin y o librerias | 1d | 2022-04-20 | 2022-04-20 |  |  | 49d |
| 30 |  | Crear servicios | 15d | 2022-04-28 | 2022-05-18 | 28 |  | 0d |
| 31 |  | Crear las conexiones con el frontend | 1d | 2022-05-19 | 2022-05-19 | 30 |  | 28d |
| 32 | 1.3.5 | **Desarrollar Frontend** | 31d | 2022-04-20 | 2022-06-01 | 25 |  | 0d |
| 33 | 1.3.5.1 | **Creacion de la vistas** | 5d | 2022-04-20 | 2022-04-26 |  |  | 21d |
| 34 |  | Login | 3d | 2022-04-20 | 2022-04-22 |  |  | 23d |
| 35 |  | Inicio | 3d | 2022-04-20 | 2022-04-22 |  |  | 23d |
| 36 |  | Usuarios | 3d | 2022-04-20 | 2022-04-22 |  |  | 23d |
| 37 |  | Citas | 5d | 2022-04-20 | 2022-04-26 |  |  | 21d |
| 38 |  | Pacientes | 3d | 2022-04-20 | 2022-04-22 |  |  | 23d |
| 39 |  | Empleados | 3d | 2022-04-20 | 2022-04-22 |  |  | 23d |
| 40 |  | Inventario y Tienda | 5d | 2022-04-20 | 2022-04-26 |  |  | 21d |
| 41 |  | Ramas médicas | 1d | 2022-04-20 | 2022-04-20 |  |  | 25d |
| 42 |  | Implementacion de los servicios | 5d | 2022-05-19 | 2022-05-25 | 30 |  | 0d |
| 43 |  | Consumir los servicios del backend | 5d | 2022-05-26 | 2022-06-01 | 42, 33 |  | 0d |
| 44 |  | Implementacion de un framework | 1d | 2022-04-20 | 2022-04-20 |  |  | 30d |
| 45 |  | Consumir un framework | 3d | 2022-04-20 | 2022-04-22 |  |  | 28d |
| 46 | 1.3.6 | **Realizar Pruebas de Software** | 3d | 2022-06-02 | 2022-06-06 |  |  | 0d |
| 47 | 1.3.6.1 | **Pruebas Funcionales** | 1d | 2022-06-02 | 2022-06-02 |  |  | 18d |
| 48 |  | Pruebas Unitarias | 1d | 2022-06-02 | 2022-06-02 | 32 |  | 18d |
| 49 |  | Pruebas de Integración | 1d | 2022-06-02 | 2022-06-02 | 32 |  | 18d |
| 50 | 1.3.6.2 | **Pruebas No Funcionales** | 3d | 2022-06-02 | 2022-06-06 |  |  | 0d |
| 51 |  | Performance Tesitng | 3d | 2022-06-02 | 2022-06-06 | 32 |  | 0d |
| 52 | 1.4 | **Monitoreo y Control** | 16d | 2022-06-07 | 2022-06-28 |  |  | 0d |
| 53 | 1.4.1 | **Desviaciones del Sistema** | 16d | 2022-06-07 | 2022-06-28 |  |  | 0d |
| 54 |  | Verificar Desviaciones del Sistema | 4d | 2022-06-07 | 2022-06-10 | 51 |  | 0d |
| 55 |  | Documentar las Desviaciones del sistema | 2d | 2022-06-13 | 2022-06-14 | 54 |  | 0d |
| 56 |  | Corrección de las Desviaciones Encontradas | 10d | 2022-06-15 | 2022-06-28 | 55 |  | 0d |
| 57 |  | Verificación de estabilidad del sistema | 3d | 2022-06-13 | 2022-06-15 | 54 |  | 9d |
| 58 |  | Test de la velocidad de respuesta del sistema | 1d | 2022-06-13 | 2022-06-13 | 54 |  | 0d |
| 59 |  | Correcciones en el plan de trabajo | 1d | 2022-06-14 | 2022-06-14 | 58 |  | 0d |
| 60 | 1.5 | **Cierre** | 10d | 2022-06-15 | 2022-06-28 |  |  | 0d |
| 61 |  | Finalizar formalmente el proyecto | 5d | 2022-06-15 | 2022-06-21 | 59 |  | 0d |
| 62 |  | Lecciones Aprendidas | 2d | 2022-06-22 | 2022-06-23 | 61 |  | 3d |
| 63 |  | Acta de Cierre | 5d | 2022-06-22 | 2022-06-28 | 61 |  | 0d |

## Version 2 (saved 2022-04-07)

Note of the change: [DEV] Feat Se ha agregado y actualizado el plan de trabajo

Last finish 2022-06-28 → 2022-05-16 (-43d). Complete tasks 18 → 23.

Added:

| ID | Task | Duration | Start | Finish | Predecessors | Resources |
| --- | --- | --- | --- | --- | --- | --- |
| 31 | Login | 3d | 2022-04-14 A | 2022-04-18 A | 28 | Johan Carrillo |
| 32 | Inicio | 3d | 2022-04-14 A | 2022-04-16 | 28 | Johan Carrillo |
| 33 | Usuarios | 3d | 2022-04-14 | 2022-04-16 | 28 | Jhensser Aguirre |
| 34 | Citas | 5d | 2022-04-14 | 2022-04-18 | 28 | Mario Sinay |
| 35 | Pacientes | 4d | 2022-04-14 | 2022-04-17 | 28 | Jorge Muñoz |
| 36 | Empleados | 4d | 2022-04-14 | 2022-04-17 | 28 | Sara Ovalle |
| 37 | Inventario y Tienda | 5d | 2022-04-14 | 2022-04-18 | 28 | Johan Carrillo |
| 38 | Ramas médicas | 3d | 2022-04-14 | 2022-04-16 | 28 | Jhensser Aguirre; Sara Ovalle |

Changed:

| ID | Task | Start | Finish | Duration | Complete | Total float | Predecessors | Other |
| --- | --- | --- | --- | --- | --- | --- | --- | --- |
| 1 | **Proyecto de Sistema para Clinica Médica** |  | 2022-06-28 → 2022-05-16 (-43d) | 74d → 63.25d | 32% → 36% |  |  |  |
| 2 | **Inicio** |  |  | 11d → 15.5d |  |  |  |  |
| 7 | Realizar Dercas |  | 2022-03-30 A → 2022-03-28 A (-2d) | 4d → 2d |  |  |  |  |
| 8 | Reunión Inicial de Proyecto (Kick Off) | 2022-03-31 A → 2022-03-29 A (-2d) |  | 1d → 3d |  |  |  |  |
| 9 | **Planificación** |  | 2022-04-05 A | 14d → 20.75d | 86% → 100% | 60d → none |  |  |
| 10 | **Toma de Requerimientos** |  | 2022-04-05 A | 14d → 20.75d | 86% → 100% | 60d → none |  |  |
| 12 | Tomar Requerimientos no Funcionales |  |  |  |  |  | none → 8 |  |
| 14 | Definir IDE a utilizar |  |  |  |  |  | none → 12 |  |
| 17 | **Desarrollo de Diagramas UML** |  | 2022-04-05 A | 8d → 12.5d | 71% → 100% | 60d → none |  |  |
| 19 | Diagrama de Clases |  | 2022-03-30 A |  | 50% → 100% | 1.6d → none |  |  |
| 20 | Diagrama de Secuencias |  | 2022-04-01 A |  | 80% → 100% | 1.6d → none |  |  |
| 21 | Diagrama de Actividades |  | 2022-04-05 A |  | 80% → 100% | 60d → none |  |  |
| 22 | **Ejecución** | 2022-04-06 A → 2022-03-29 A (-8d) | 2022-06-06 → 2022-05-01 (-36d) | 44d → 34.75d | 21% → 26% |  | none → 9 |  |
| 23 | Realizar Mockups | 2022-04-06 A → 2022-03-29 A (-8d) | 2022-04-11 A → 2022-04-03 A (-8d) |  |  |  | 21 → 7 |  |
| 24 | Implementacion del ambiente para desarrollo | 2022-04-12 A → 2022-03-29 A (-14d) | 2022-04-12 A → 2022-03-29 A (-14d) |  |  |  | 23 → 7 |  |
| 25 | Realizar la Base de Datos | 2022-04-13 A → 2022-03-30 A (-14d) | 2022-04-19 A → 2022-04-05 A (-14d) |  |  |  |  |  |
| 26 | **Desarrollar Backend** | 2022-04-20 A → 2022-04-06 A (-14d) | 2022-05-19 → 2022-04-19 (-30d) | 22d → 14.5d | 26% → 27% |  |  |  |
| 27 | Creacion de conexión a la base de datos | 2022-04-20 A → 2022-04-06 A (-14d) | 2022-04-22 A → 2022-04-08 A (-14d) |  |  |  |  |  |
| 28 | Configuracion de la base de datos | 2022-04-25 A → 2022-04-11 A (-14d) | 2022-04-27 A → 2022-04-13 A (-14d) |  |  |  |  |  |
| 29 | Implemenacion de plugin y o librerias | 2022-04-20 → 2022-04-09 A (-11d) | 2022-04-20 → 2022-04-09 (-11d) |  | 0% → 50% | 49d → 38.5d | none → 27 |  |
| 30 | **Crear servicios** | 2022-04-28 → 2022-04-14 A (-14d) | 2022-05-18 → 2022-04-18 (-30d) | 15d → 5.25d | 0% → 13% |  |  |  |
| 39 | Crear las conexiones con el frontend | 2022-05-19 → 2022-04-19 (-30d) | 2022-05-19 → 2022-04-19 (-30d) |  |  |  |  |  |
| 40 | **Desarrollar Frontend** | 2022-04-20 → 2022-04-14 A (-6d) | 2022-06-01 → 2022-04-28 (-34d) | 31d → 15.25d | 0% → 9% |  | 25 → none |  |
| 41 | **Creacion de la vistas** | 2022-04-20 → 2022-04-14 A (-6d) | 2022-04-26 → 2022-04-22 (-4d) | 5d → 9.25d | 0% → 14% | 21d → 1d |  |  |
| 42 | Login | 2022-04-20 A | 2022-04-22 A |  | 0% → 100% | 23d → none | none → 28 | resources none → Johan Carrillo |
| 43 | Inicio | 2022-04-20 A |  |  | 0% → 25% | 23d → 1d | none → 28 | resources none → Johan Carrillo |
| 44 | Usuarios | 2022-04-20 → 2022-04-14 (-6d) | 2022-04-22 → 2022-04-16 (-6d) |  |  | 23d → 7.25d | none → 28 | resources none → Jhensser Aguirre |
| 45 | Citas | 2022-04-20 → 2022-04-14 (-6d) | 2022-04-26 → 2022-04-18 (-8d) |  |  | 21d → 5.25d | none → 28 | resources none → Mario Sinay |
| 46 | Pacientes | 2022-04-20 → 2022-04-14 (-6d) | 2022-04-22 → 2022-04-16 (-6d) |  |  | 23d → 7.25d | none → 28 | resources none → Jorge Muñoz |
| 47 | Empleados | 2022-04-20 → 2022-04-14 (-6d) | 2022-04-22 → 2022-04-16 (-6d) |  |  | 23d → 7.25d | none → 28 | resources none → Sara Ovalle |
| 48 | Inventario y Tienda | 2022-04-20 → 2022-04-14 (-6d) | 2022-04-26 → 2022-04-18 (-8d) |  |  | 21d → 5.25d | none → 28 | resources none → Johan Carrillo |
| 49 | Ramas médicas | 2022-04-20 → 2022-04-14 (-6d) | 2022-04-20 → 2022-04-14 (-6d) |  |  | 25d → 9.25d | none → 28 | resources none → Jhensser Aguirre; Sara Ovalle |
| 50 | Implementacion de los servicios | 2022-05-19 → 2022-04-19 (-30d) | 2022-05-25 → 2022-04-23 (-32d) |  |  |  |  |  |
| 51 | Consumir los servicios del backend | 2022-05-26 → 2022-04-23 (-33d) | 2022-06-01 → 2022-04-28 (-34d) |  |  |  |  |  |
| 52 | Implementacion de un framework | 2022-04-20 → 2022-04-23 (+3d) | 2022-04-20 → 2022-04-24 (+4d) |  |  | 30d → 4d | none → 50 |  |
| 53 | Consumir un framework | 2022-04-20 → 2022-04-23 (+3d) | 2022-04-22 → 2022-04-26 (+4d) |  |  | 28d → 2d | none → 50 |  |
| 54 | **Realizar Pruebas de Software** | 2022-06-02 → 2022-04-28 (-35d) | 2022-06-06 → 2022-05-01 (-36d) |  |  |  |  |  |
| 55 | **Pruebas Funcionales** | 2022-06-02 → 2022-04-28 (-35d) | 2022-06-02 → 2022-04-29 (-34d) |  |  |  |  |  |
| 56 | Pruebas Unitarias | 2022-06-02 → 2022-04-28 (-35d) | 2022-06-02 → 2022-04-29 (-34d) |  |  |  |  |  |
| 57 | Pruebas de Integración | 2022-06-02 → 2022-04-28 (-35d) | 2022-06-02 → 2022-04-29 (-34d) |  |  |  |  |  |
| 58 | **Pruebas No Funcionales** | 2022-06-02 → 2022-04-28 (-35d) | 2022-06-06 → 2022-05-01 (-36d) |  |  |  |  |  |
| 59 | Performance Tesitng | 2022-06-02 → 2022-04-28 (-35d) | 2022-06-06 → 2022-05-01 (-36d) |  |  |  |  |  |
| 60 | **Monitoreo y Control** | 2022-06-07 → 2022-05-01 (-37d) | 2022-06-28 → 2022-05-16 (-43d) |  |  |  |  |  |
| 61 | **Desviaciones del Sistema** | 2022-06-07 → 2022-05-01 (-37d) | 2022-06-28 → 2022-05-16 (-43d) |  |  |  |  |  |
| 62 | Verificar Desviaciones del Sistema | 2022-06-07 → 2022-05-01 (-37d) | 2022-06-10 → 2022-05-05 (-36d) |  |  |  |  |  |
| 63 | Documentar las Desviaciones del sistema | 2022-06-13 → 2022-05-05 (-39d) | 2022-06-14 → 2022-05-07 (-38d) |  |  |  |  |  |
| 64 | Corrección de las Desviaciones Encontradas | 2022-06-15 → 2022-05-07 (-39d) | 2022-06-28 → 2022-05-16 (-43d) |  |  |  |  |  |
| 65 | Verificación de estabilidad del sistema | 2022-06-13 → 2022-05-05 (-39d) | 2022-06-15 → 2022-05-08 (-38d) |  |  |  |  |  |
| 66 | Test de la velocidad de respuesta del sistema | 2022-06-13 → 2022-05-05 (-39d) | 2022-06-13 → 2022-05-06 (-38d) |  |  | 0d → 4d |  |  |
| 67 | Correcciones en el plan de trabajo | 2022-06-14 → 2022-05-06 (-39d) | 2022-06-14 → 2022-05-07 (-38d) |  |  | 0d → 4d |  |  |
| 68 | **Cierre** | 2022-06-15 → 2022-05-07 (-39d) | 2022-06-28 → 2022-05-13 (-46d) | 10d → 6d |  | 0d → 4d |  |  |
| 69 | Finalizar formalmente el proyecto | 2022-06-15 → 2022-05-07 (-39d) | 2022-06-21 → 2022-05-10 (-42d) | 5d → 3d |  | 0d → 4d |  |  |
| 70 | Lecciones Aprendidas | 2022-06-22 → 2022-05-10 (-43d) | 2022-06-23 → 2022-05-12 (-42d) |  |  | 3d → 5d |  |  |
| 71 | Acta de Cierre | 2022-06-22 → 2022-05-10 (-43d) | 2022-06-28 → 2022-05-13 (-46d) | 5d → 3d |  | 0d → 4d |  |  |

## Version 3 (saved 2022-04-15)

Note of the change: [DEV] Se ha actualizado el archivo planDeTrabajo (Project)

Last finish stays 2022-05-16. Complete tasks 23 → 25.

Changed:

| ID | Task | Finish | Complete | Total float |
| --- | --- | --- | --- | --- |
| 1 | **Proyecto de Sistema para Clinica Médica** |  | 36% → 39% |  |
| 22 | **Ejecución** |  | 26% → 31% |  |
| 26 | **Desarrollar Backend** |  | 27% → 33% |  |
| 30 | **Crear servicios** |  | 13% → 20% |  |
| 32 | Inicio | 2022-04-16 A | 25% → 100% | 2.25d → none |
| 40 | **Desarrollar Frontend** |  | 9% → 15% |  |
| 41 | **Creacion de la vistas** |  | 14% → 23% |  |
| 43 | Inicio | 2022-04-22 A | 25% → 100% | 1d → none |

## Version 4 (saved 2022-04-21)

Note of the change: corrigiendo rutas, login

Last finish 2022-05-16 → 2022-05-20 (+4d). Complete tasks 25 → 34.

Added:

| ID | Task | Duration | Start | Finish | Resources |
| --- | --- | --- | --- | --- | --- |
| 35 | Detalle de citas | 8d | 2022-04-14 A | 2022-04-21 | Mario Sinay |
| 36 | Sucursales | 8d | 2022-04-14 A | 2022-04-21 | Mario Sinay |
| 38 | Historial médico | 9d | 2022-04-14 | 2022-04-22 | Jorge Muñoz |
| 40 | Puestos | 3d | 2022-04-14 A | 2022-04-16 A | Sara Ocalle |

Changed:

| ID | Task | Start | Finish | Duration | Complete | Total float |
| --- | --- | --- | --- | --- | --- | --- |
| 1 | **Proyecto de Sistema para Clinica Médica** |  | 2022-05-16 → 2022-05-20 (+4d) | 63.25d → 67d | 39% → 60% |  |
| 22 | **Ejecución** |  | 2022-05-01 → 2022-05-05 (+4d) | 34.75d → 38.5d | 31% → 65% |  |
| 26 | **Desarrollar Backend** |  | 2022-04-19 → 2022-04-23 (+4d) | 14.5d → 18.25d | 33% → 67% |  |
| 29 | Implemenacion de plugin y o librerias |  |  |  | 50% → 90% |  |
| 30 | **Crear servicios** |  | 2022-04-18 → 2022-04-22 (+4d) | 5.25d → 9d | 20% → 62% |  |
| 33 | Usuarios | 2022-04-14 A | 2022-04-16 A |  | 0% → 100% | 2.25d → none |
| 34 | **Citas** | 2022-04-14 A | 2022-04-18 → 2022-04-21 (+3d) | 5d → 8d | 0% → 70% | 0.25d → 1d |
| 37 | **Pacientes** |  | 2022-04-17 → 2022-04-22 (+5d) | 4d → 9d |  | 1.25d → 0d |
| 39 | **Empleados** | 2022-04-14 A | 2022-04-17 → 2022-04-16 A (-1d) | 4d → 3d | 0% → 100% | 1.25d → none |
| 41 | Inventario y Tienda | 2022-04-14 A |  |  | 0% → 35% | 0.25d → 4d |
| 42 | Ramas médicas | 2022-04-14 A | 2022-04-16 A |  | 0% → 100% | 2.25d → none |
| 43 | Crear las conexiones con el frontend | 2022-04-19 → 2022-04-22 A (+3d) | 2022-04-19 → 2022-04-23 (+4d) |  | 0% → 90% |  |
| 44 | **Desarrollar Frontend** |  | 2022-04-28 → 2022-05-02 (+4d) | 15.25d → 19d | 15% → 61% |  |
| 45 | **Creacion de la vistas** |  |  |  | 23% → 78% | 1d → 4.75d |
| 48 | Usuarios | 2022-04-14 A | 2022-04-16 A |  | 0% → 100% | 7.25d → none |
| 49 | Citas | 2022-04-14 A |  |  | 0% → 50% | 5.25d → 9d |
| 50 | Pacientes | 2022-04-14 A | 2022-04-16 A |  | 0% → 100% | 7.25d → none |
| 51 | Empleados | 2022-04-14 A | 2022-04-16 A |  | 0% → 100% | 7.25d → none |
| 52 | Inventario y Tienda | 2022-04-14 A |  |  | 0% → 35% | 5.25d → 9d |
| 53 | Ramas médicas | 2022-04-14 A | 2022-04-14 A |  | 0% → 100% | 9.25d → none |
| 54 | Implementacion de los servicios | 2022-04-19 → 2022-04-22 (+3d) | 2022-04-23 → 2022-04-27 (+4d) |  |  |  |
| 55 | Consumir los servicios del backend | 2022-04-23 → 2022-04-27 (+4d) | 2022-04-28 → 2022-05-02 (+4d) |  |  |  |
| 56 | Implementacion de un framework | 2022-04-23 A | 2022-04-24 → 2022-04-27 A (+3d) |  | 0% → 100% | 4d → none |
| 57 | Consumir un framework | 2022-04-23 A | 2022-04-26 → 2022-04-28 A (+2d) |  | 0% → 100% | 2d → none |
| 58 | **Realizar Pruebas de Software** | 2022-04-28 → 2022-05-02 (+4d) | 2022-05-01 → 2022-05-05 (+4d) |  |  |  |
| 59 | **Pruebas Funcionales** | 2022-04-28 → 2022-05-02 (+4d) | 2022-04-29 → 2022-05-03 (+4d) |  |  |  |
| 60 | Pruebas Unitarias | 2022-04-28 → 2022-05-02 (+4d) | 2022-04-29 → 2022-05-03 (+4d) |  |  |  |
| 61 | Pruebas de Integración | 2022-04-28 → 2022-05-02 (+4d) | 2022-04-29 → 2022-05-03 (+4d) |  |  |  |
| 62 | **Pruebas No Funcionales** | 2022-04-28 → 2022-05-02 (+4d) | 2022-05-01 → 2022-05-05 (+4d) |  |  |  |
| 63 | Performance Tesitng | 2022-04-28 → 2022-05-02 (+4d) | 2022-05-01 → 2022-05-05 (+4d) |  |  |  |
| 64 | **Monitoreo y Control** | 2022-05-01 → 2022-05-05 (+4d) | 2022-05-16 → 2022-05-20 (+4d) |  |  |  |
| 65 | **Desviaciones del Sistema** | 2022-05-01 → 2022-05-05 (+4d) | 2022-05-16 → 2022-05-20 (+4d) |  |  |  |
| 66 | Verificar Desviaciones del Sistema | 2022-05-01 → 2022-05-05 (+4d) | 2022-05-05 → 2022-05-08 (+3d) |  |  |  |
| 67 | Documentar las Desviaciones del sistema | 2022-05-05 → 2022-05-09 (+4d) | 2022-05-07 → 2022-05-10 (+3d) |  |  |  |
| 68 | Corrección de las Desviaciones Encontradas | 2022-05-07 → 2022-05-11 (+4d) | 2022-05-16 → 2022-05-20 (+4d) |  |  |  |
| 69 | Verificación de estabilidad del sistema | 2022-05-05 → 2022-05-09 (+4d) | 2022-05-08 → 2022-05-11 (+3d) |  |  |  |
| 70 | Test de la velocidad de respuesta del sistema | 2022-05-05 → 2022-05-09 (+4d) | 2022-05-06 → 2022-05-09 (+3d) |  |  |  |
| 71 | Correcciones en el plan de trabajo | 2022-05-06 → 2022-05-10 (+4d) | 2022-05-07 → 2022-05-10 (+3d) |  |  |  |
| 72 | **Cierre** | 2022-05-07 → 2022-05-11 (+4d) | 2022-05-13 → 2022-05-16 (+3d) |  |  |  |
| 73 | Finalizar formalmente el proyecto | 2022-05-07 → 2022-05-11 (+4d) | 2022-05-10 → 2022-05-13 (+3d) |  |  |  |
| 74 | Lecciones Aprendidas | 2022-05-10 → 2022-05-14 (+4d) | 2022-05-12 → 2022-05-15 (+3d) |  |  |  |
| 75 | Acta de Cierre | 2022-05-10 → 2022-05-14 (+4d) | 2022-05-13 → 2022-05-16 (+3d) |  |  |  |

## Version 5 (saved 2022-05-10)

Note of the change: Se actualiza el projectCharter

Last finish 2022-05-20 → 2022-05-22 (+2d). Complete tasks 34 → 47.

Changed:

| ID | Task | Start | Finish | Duration | Complete | Total float | Predecessors | Other |
| --- | --- | --- | --- | --- | --- | --- | --- | --- |
| 1 | **Proyecto de Sistema para Clinica Médica** |  | 2022-05-20 → 2022-05-22 (+2d) | 67d → 69d | 60% → 92% |  |  |  |
| 22 | **Ejecución** |  | 2022-05-05 → 2022-05-12 (+7d) | 38.5d → 45.6d | 65% → 97% | 16d → 10.9d |  |  |
| 26 | **Desarrollar Backend** |  | 2022-04-23 → 2022-05-12 (+19d) | 18.25d → 37.35d | 67% → 96% | 28d → 10.9d |  |  |
| 29 | Implemenacion de plugin y o librerias |  | 2022-04-09 A |  | 90% → 100% | 38.5d → none |  |  |
| 30 | **Crear servicios** |  | 2022-04-22 → 2022-04-28 (+6d) | 9d → 15d | 62% → 94% | 0d → 25d |  |  |
| 34 | **Citas** |  | 2022-04-21 → 2022-04-23 (+2d) | 8d → 10d | 70% → 89% | 1d → 30d |  |  |
| 35 | Detalle de citas |  | 2022-04-21 → 2022-04-23 (+2d) | 8d → 10d | 70% → 80% | 1d → 30d |  |  |
| 36 | Sucursales |  | 2022-04-21 A |  | 70% → 100% | 1d → none |  |  |
| 37 | **Pacientes** | 2022-04-14 A | 2022-04-22 → 2022-04-28 (+6d) | 9d → 15d | 0% → 90% | 0d → 25d |  |  |
| 38 | Historial médico | 2022-04-14 A | 2022-04-22 → 2022-04-28 (+6d) | 9d → 15d | 0% → 90% | 0d → 25d |  |  |
| 39 | **Empleados** |  | 2022-04-16 A → 2022-04-21 A (+5d) | 3d → 8d |  |  |  |  |
| 40 | Puestos |  | 2022-04-16 A → 2022-04-21 A (+5d) | 3d → 8d |  |  |  | resources Sara Ocalle → Sara Ovalle |
| 41 | Inventario y Tienda |  | 2022-04-18 A |  | 35% → 100% | 4d → none |  |  |
| 43 | Crear las conexiones con el frontend |  | 2022-04-23 → 2022-05-12 A (+19d) | 1d → 15d | 90% → 100% | 28d → none |  |  |
| 44 | **Desarrollar Frontend** |  |  |  | 61% → 98% | 0d → 0.9d |  |  |
| 45 | **Creacion de la vistas** |  |  |  | 78% → 96% | 4.75d → 10.65d |  |  |
| 49 | Citas |  |  |  | 50% → 80% | 9d → 14.9d |  |  |
| 52 | Inventario y Tienda |  | 2022-04-18 A |  | 35% → 100% | 9d → none |  |  |
| 54 | Implementacion de los servicios | 2022-04-22 A | 2022-04-27 → 2022-04-29 A (+2d) |  | 0% → 100% | 0d → none |  |  |
| 55 | Consumir los servicios del backend | 2022-04-27 A | 2022-05-02 A |  | 0% → 100% | 0d → none |  |  |
| 58 | **Realizar Pruebas de Software** | 2022-05-02 A |  |  | 0% → 98% | 0d → 18d |  |  |
| 59 | **Pruebas Funcionales** | 2022-05-02 A |  |  | 0% → 95% | 18d → 20d |  |  |
| 60 | Pruebas Unitarias | 2022-05-02 A |  |  | 0% → 90% | 18d → 20d |  |  |
| 61 | Pruebas de Integración | 2022-05-02 A | 2022-05-03 A |  | 0% → 100% | 18d → none |  |  |
| 62 | **Pruebas No Funcionales** | 2022-05-02 A | 2022-05-05 A |  | 0% → 100% | 0d → none |  |  |
| 63 | Performance Tesitng | 2022-05-02 A | 2022-05-05 A |  | 0% → 100% | 0d → none |  |  |
| 64 | **Monitoreo y Control** | 2022-05-05 A | 2022-05-20 → 2022-05-16 (-4d) | 16d → 12d | 0% → 86% | 0d → 6d |  |  |
| 65 | **Desviaciones del Sistema** | 2022-05-05 A | 2022-05-20 → 2022-05-16 (-4d) | 16d → 12d | 0% → 85% |  |  |  |
| 66 | Verificar Desviaciones del Sistema | 2022-05-05 A | 2022-05-08 A |  | 0% → 100% | 0d → none |  |  |
| 67 | Documentar Desviaciones del sistema | 2022-05-09 A | 2022-05-10 A |  | 0% → 100% | 0d → none |  | was named Documentar las Desviaciones del sistema |
| 68 | Corrección de las Desviaciones Encontradas | 2022-05-11 A | 2022-05-20 → 2022-05-16 (-4d) | 10d → 6d | 0% → 70% |  |  |  |
| 69 | Verificación de estabilidad del sistema | 2022-05-09 A |  |  | 0% → 80% | 9d → 11d |  |  |
| 70 | Test de la velocidad de respuesta del sistema | 2022-05-09 A | 2022-05-09 A |  | 0% → 100% | 4d → none |  |  |
| 71 | Correcciones en el plan de trabajo | 2022-05-10 A | 2022-05-10 A |  | 0% → 100% | 4d → none |  |  |
| 72 | **Cierre** | 2022-05-11 → 2022-05-16 (+5d) | 2022-05-16 → 2022-05-22 (+6d) |  |  | 4d → 0d |  |  |
| 73 | Finalizar formalmente el proyecto | 2022-05-11 → 2022-05-16 (+5d) | 2022-05-13 → 2022-05-19 (+6d) |  |  | 4d → 0d | 71 → 68 |  |
| 74 | Lecciones Aprendidas | 2022-05-14 → 2022-05-19 (+5d) | 2022-05-15 → 2022-05-21 (+6d) |  |  | 5d → 1d |  |  |
| 75 | Acta de Cierre | 2022-05-14 → 2022-05-19 (+5d) | 2022-05-16 → 2022-05-22 (+6d) |  |  | 4d → 0d |  |  |

## Version 6 (saved 2022-05-15)

Note of the change: Se actualiza el project

Last finish stays 2022-05-22. Complete tasks 47 → 55.

Changed:

| ID | Task | Start | Finish | Duration | Complete | Total float | Predecessors |
| --- | --- | --- | --- | --- | --- | --- | --- |
| 1 | **Proyecto de Sistema para Clinica Médica** |  |  |  | 92% → 94% |  |  |
| 22 | **Ejecución** |  |  |  | 97% → 99% | 10.9d → 0d |  |
| 26 | **Desarrollar Backend** |  |  |  | 96% → 98% | 10.9d → 0d |  |
| 30 | **Crear servicios** |  |  |  | 94% → 97% | 25d → 0d |  |
| 34 | **Citas** |  |  |  | 89% → 99% | 30d → 0d |  |
| 35 | Detalle de citas |  | 2022-04-23 A |  | 80% → 100% | 30d → none |  |
| 38 | Historial médico |  | 2022-04-28 A |  | 90% → 100% | 25d → none | none → 28 |
| 44 | **Desarrollar Frontend** |  |  |  | 98% → 99% | 0.9d → 0d |  |
| 45 | **Creacion de la vistas** |  |  |  | 96% → 99% | 10.65d → 0d |  |
| 49 | Citas |  | 2022-04-18 A |  | 80% → 100% | 14.9d → none |  |
| 51 | Empleados |  | 2022-04-16 A → 2022-05-15 A (+29d) | 3d → 9.25d |  |  |  |
| 58 | **Realizar Pruebas de Software** |  |  |  | 98% → 99% | 18d → 0d |  |
| 59 | **Pruebas Funcionales** |  |  |  | 95% → 98% | 20d → 0d |  |
| 60 | Pruebas Unitarias |  | 2022-05-03 A |  | 90% → 100% | 20d → none |  |
| 68 | Corrección de las Desviaciones Encontradas |  | 2022-05-16 A |  | 70% → 100% | 0d → none |  |
| 69 | Verificación de estabilidad del sistema |  | 2022-05-11 A |  | 80% → 100% | 11d → none |  |
| 73 | Finalizar formalmente el proyecto | 2022-05-16 A | 2022-05-19 A |  | 0% → 100% | 0d → none |  |
| 74 | Lecciones Aprendidas | 2022-05-19 A | 2022-05-21 A |  | 0% → 100% | 1d → none |  |
